# Children's Book Schedule

Schedule from MS Project, 2015-07-30 to 2015-09-25, costs in $, A marks actual dates.
Lucerne Publishing

## Calendars

- Standard: Mon-Fri 08:00-12:00, 13:00-17:00; Sat-Sun off.

## Resources

| Resource | Group | Unit | Rate |
| --- | --- | --- | --- |
| Carole Poland | Editorial |  | 52.5 |
| Copyeditors | Editorial |  | 45 |
| Dan Jump | Design |  | 75.5 |
| Hany Morcos | Editorial |  | 38.75 |
| Jane Dow | Editorial |  | 63.25 |
| Jun Cao | Editorial |  | 42 |
| Luis Sousa | Design |  | 70 |
| Printing Service | Production |  |  |
| Travel | Other |  |  |
| Tad Orman | Other |  |  |
| Color Setting Services | Production |  |  |
| Bound galley proofs | Production | copies | 15 |
| Thu Khương |  |  |  |
| Thúy Kiều |  |  |  |
| Thảo Vy |  |  |  |
| Thanh Tuấn |  |  |  |
| Anh Việt |  |  |  |
| Hải Nam |  |  |  |

## Schedule

| ID | WBS | Task | Type | Duration | Start | Finish | Predecessors | Complete | Remaining | Baseline start | Baseline finish | Baseline duration | Total slack | Constraint | Resources | Work | Actual work | Cost | Baseline cost |
| --- | --- | --- | --- | --- | --- | --- | --- | --- | --- | --- | --- | --- | --- | --- | --- | --- | --- | --- | --- |
| 1 | 1 | **Thiết kế và sản xuất** |  | 42d | 2015-07-30 A | 2015-09-25 |  | 5% | 39.98d | 2015-07-03 | 2015-09-23 | 58.25d | 0d |  |  | 512h | 32h | 4,545 | 46,679 |
| 2 | 1.1 | **Đánh giá Trang đầu tiên** |  | 30d | 2015-07-30 A | 2015-09-09 |  | 7% | 28d | 2015-07-24 | 2015-09-04 | 30d | 0d |  |  | 380h | 32h |  | 13,860 |
| 3 | 1.1.1 | Hiệu đính và lập chỉ mục |  | 10d | 2015-07-30 A | 2015-08-12 |  | 20% | 8d | 2015-07-24 | 2015-08-07 | 10d | 0d | start no earlier than 2015-07-17 | Anh Việt; Hải Nam | 160h | 32h |  | 900 |
| 4 | 1.1.2 | Kết hợp đánh giá Trang đầu tiên |  | 10d | 2015-08-13 | 2015-08-26 | 3 |  |  | 2015-08-07 | 2015-08-21 | 10d | 0d |  | Thu Khương; Thúy Kiều [50%] | 120h |  |  | 6,120 |
| 5 | 1.1.3 | Gửi các trang đã hiệu đính cho Phòng Sản xuất | milestone | 0d | 2015-08-26 | 2015-08-26 | 4 |  |  | 2015-08-21 | 2015-08-21 | 0d | 0d |  | Thu Khương |  |  |  |  |
| 6 | 1.1.4 | Nhập các chỉnh sửa trang và lập chỉ mục |  | 5d | 2015-08-27 | 2015-09-02 | 5 |  |  | 2015-08-21 | 2015-08-28 | 5d | 0d |  | Thúy Kiều [50%]; Thảo Vy | 60h |  |  | 4,040 |
| 7 | 1.1.5 | Thiết kế bìa |  | 5d | 2015-09-03 | 2015-09-09 | 6 |  |  | 2015-08-28 | 2015-09-04 | 5d | 0d |  | Thanh Tuấn | 40h |  |  | 2,800 |
| 8 | 1.2 | **Đánh giá Trang thứ hai** |  | 12d | 2015-09-10 | 2015-09-25 |  |  |  | 2015-09-04 | 2015-09-23 | 13d | 0d |  |  | 132h |  | 4,545 | 6,345 |
| 9 | 1.2.1 | Proof and review |  | 6.5d | 2015-09-10 | 2015-09-18 | 7 |  |  | 2015-09-04 | 2015-09-15 | 6.5d | 0d |  | Thu Khương | 52h |  |  | 1,800 |
| 10 | 1.2.2 | Send proofed pages to Production | milestone | 0d | 2015-09-18 | 2015-09-18 | 9 |  |  | 2015-09-15 | 2015-09-15 | 0d | 0d |  | Thu Khương |  |  |  |  |
| 11 | 1.2.3 | Final review |  | 5d | 2015-09-21 | 2015-09-25 | 10 |  |  | 2015-09-16 | 2015-09-23 | 5d | 0d |  | Jane Dow; Hany Morcos [50%]; Carole Poland [50%]; Bound galley proofs [20 copies] | 80h |  | 4,545 | 4,545 |
