# Lịch ra mắt sách mới

Schedule from MS Project, 2015-01-05 to 2015-02-06, status date 2015-01-14, A marks actual dates.
New book launch schedule
Lucerne Publishing
New children's book for spring release

## Calendars

- Standard: Mon-Fri 08:00-12:00, 13:00-17:00; Sat-Sun off. Exceptions (off unless hours are given): 2015-01-22 (Staff at morale event).

## Resources

| Resource | Rate | Notes |
| --- | --- | --- |
| Jun Cao | 42 |  |
| Sharon Salavaria | 27.5 | Sharons standard pay rate is adjusted for her half-time work schedule. |
| Toby Nixon | 67.5 | Toby worked on launch campaigns for Toni Poes previous two books. |
| Toni Poe |  |  |
| Zac Woodall | 55 |  |
| Copyeditors | 45 |  |
| Travel |  |  |
| Carole Poland | 52.5 |  |
| Dan Jump | 75.5 |  |
| Hany Morcos | 38.75 |  |
| Jane Dow | 55 |  |
| John Evans | 69.5 |  |
| Katie Jordan | 48 |  |
| Luis Sousa | 70 |  |
| Printing Service |  |  |
| Robin Wood | 44 |  |
| Vikas Jain | 22 |  |
| William Flash |  |  |
| Thu Khương |  |  |
| Mỹ Linh |  |  |
| Thúy Kiều |  |  |
| Cẩm Tú |  |  |
| Ngọc Huyền |  |  |

## Schedule

| ID | WBS | Task | Type | Duration | Start | Finish | Predecessors | Complete | Remaining | Baseline start | Baseline finish | Baseline duration | Total slack | Resources | Work | Actual work | Baseline cost |
| --- | --- | --- | --- | --- | --- | --- | --- | --- | --- | --- | --- | --- | --- | --- | --- | --- | --- |
| 1 | 1 | **Giai đoạn lập kế hoạch** |  | 11d | 2015-01-05 A | 2015-01-19 |  | 86% | 1.57d | 2015-01-05 | 2015-01-19 | 11d | 0d |  | 168h | 144h | 11,900 |
| 2 | 1.1 | Chỉ định các thành viên trong nhóm phát hành |  | 1d | 2015-01-05 A | 2015-01-05 A |  | 100% |  | 2015-01-05 | 2015-01-05 | 1d |  | Thu Khương | 8h | 8h | 420 |
| 3 | 1.2 | Hoàn thành bảng câu hỏi về tác giả |  | 1w | 2015-01-06 A | 2015-01-12 A | 2 | 100% |  | 2015-01-06 | 2015-01-12 | 1w |  | Mỹ Linh | 40h | 40h |  |
| 4 | 1.3 | Lên lịch phỏng vấn tác giả |  | 1w | 2015-01-05 A | 2015-01-12 A | 2 | 100% |  | 2015-01-05 | 2015-01-12 | 1w |  | Thúy Kiều | 40h | 40h | 1,680 |
| 5 | 1.4 | Thiết kế và đặt hàng tài liệu tiếp thị |  | 2w | 2015-01-06 A | 2015-01-19 | 2 | 70% | 0.6w | 2015-01-06 | 2015-01-19 | 2w | 0d | Cẩm Tú | 80h | 56h | 9,800 |
| 6 | 1.5 | Lập kế hoạch hoàn tất | milestone | 0d | 2015-01-19 | 2015-01-19 | 5 |  |  | 2015-01-19 | 2015-01-19 | 0d | 0d | Cẩm Tú |  |  |  |
| 7 | 2 | **Giai đoạn ra mắt nội bộ** |  | 13d | 2015-01-20 | 2015-02-06 | 1 |  |  | 2015-01-20 | 2015-02-06 | 13d | 0d |  | 184h |  | 13,942 |
| 8 | 2.1 | Khởi động cuộc họp ra mắt sách |  | 1d | 2015-01-20 | 2015-01-20 |  |  |  | 2015-01-20 | 2015-01-20 | 1d | 0d | Ngọc Huyền | 8h |  | 650 |
| 9 | 2.2 | Soạn báo cáo lời - lỗ về sách |  | 2d | 2015-01-21 | 2015-01-23 | 8 |  |  | 2015-01-21 | 2015-01-23 | 2d | 10d | Thu Khương | 16h |  | 840 |
| 10 | 2.3 | Lập kế hoạch cho hành trình của tác giả |  | 6d | 2015-01-21 | 2015-01-29 | 8 |  |  | 2015-01-21 | 2015-01-29 | 6d | 6d | Ngọc Huyền | 48h |  | 2,640 |
| 11 | 2.4 | Chuẩn bị kênh bán hàng |  | 2w | 2015-01-21 | 2015-02-04 | 8 |  |  | 2015-01-21 | 2015-01-28 | 1w | 0d | Cẩm Tú | 80h |  | 3,750 |
| 12 | 2.5 | Hoàn thành mẫu ra mắt sách |  | 2d | 2015-02-05 | 2015-02-06 | 11 |  |  | 2015-01-29 | 2015-01-30 | 2d | 0d | Ngọc Huyền; Mỹ Linh | 32h |  | 1,432 |
